# Programa de obra - Lander - Amenidades

Schedule from MS Project XML, 2026-08-10 to 2026-09-26.

## Calendars

- METTA: Mon-Fri 08:00-12:00, 13:00-17:00; Sat 08:00-13:00; Sun off. Exceptions (off unless hours are given): 2026-09-16 (16 de Septiembre).

## Schedule

| ID | WBS | Task | Type | Duration | Start | Finish | Predecessors | Total slack | Free slack |
| --- | --- | --- | --- | --- | --- | --- | --- | --- | --- |
| 1 | 1 | **OBRA CIVIL - AMENIDADES - MAR DE PLATA** |  | 38d | 2026-08-10 | 2026-09-26 |  | 0d |  |
| 2 | 1.1 | **HITOS DEL PROYECTO** |  | 38d | 2026-08-10 | 2026-09-26 |  | 0d |  |
| 3 | 1.1.1 | Inicio | milestone | 0d | 2026-08-10 | 2026-08-10 |  | 0d |  |
| 4 | 1.1.2 | Fin de Etapa de Alb. | milestone | 0d | 2026-09-26 | 2026-09-26 | 23, 41 | 0d |  |
| 5 | 1.2 | **PRELIMINARES** |  | 2d | 2026-08-10 | 2026-08-11 |  | 4.5d |  |
| 6 | 1.2.1 | Trazo y nivelación |  | 2d | 2026-08-10 | 2026-08-11 | 3 | 4.5d | 0d |
| 7 | 1.3 | **MUROS LOGO TIPO Y ASADOR** |  | 31.5d | 2026-08-12 | 2026-09-21 |  | 4.5d |  |
| 8 | 1.3.1 | **CIMENTACIÓN** |  | 18.5d | 2026-08-12 | 2026-09-03 |  | 4.5d |  |
| 9 | 1.3.1.1 | Excavacion |  | 2d | 2026-08-12 | 2026-08-13 | 6 | 4.5d | 0d |
| 10 | 1.3.1.2 | Acarreo de material |  | 1d | 2026-08-13 | 2026-08-14 | 9FS-0.5d | 4.5d | 0d |
| 11 | 1.3.1.3 | Compactación |  | 1d | 2026-08-14 | 2026-08-15 | 9, 10 | 4.5d | 0d |
| 12 | 1.3.1.4 | Plantilla |  | 2d | 2026-08-15 | 2026-08-18 | 11 | 4.5d | 0d |
| 13 | 1.3.1.5 | Losa de Cimentación |  | 3d | 2026-08-18 | 2026-08-21 | 12 | 4.5d | 0d |
| 14 | 1.3.1.6 | Muro de contencíon Block 20 |  | 5d | 2026-08-21 | 2026-08-28 | 13 | 4.5d | 0d |
| 15 | 1.3.1.7 | Block Dala de 20 |  | 4d | 2026-08-25 | 2026-08-29 | 14SS+2d | 4.5d | 0d |
| 16 | 1.3.1.8 | Relleno compactado |  | 5d | 2026-08-28 | 2026-09-03 | 14, 15FS-3d | 4.5d | 0d |
| 17 | 1.3.2 | **ALBAÑILERIA** |  | 17d | 2026-08-29 | 2026-09-21 |  | 4.5d |  |
| 18 | 1.3.2.1 | Muro de block de 20 |  | 13d | 2026-08-29 | 2026-09-15 | 15, 16SS+1d | 4.5d | 0d |
| 19 | 1.3.2.2 | Block Dala |  | 9d | 2026-09-02 | 2026-09-14 | 18SS+3d | 4.5d | 0d |
| 20 | 1.3.2.3 | Castillos ahogados |  | 10d | 2026-09-01 | 2026-09-14 | 18SS+2d | 4.5d | 0d |
| 21 | 1.3.2.4 | Losa de concreto Asador |  | 4d | 2026-09-04 | 2026-09-09 | 18SS+5d | 7.5d | 3d |
| 22 | 1.3.2.5 | Arcos de concreto |  | 5d | 2026-09-04 | 2026-09-10 | 18SS+5d | 6.5d | 2d |
| 23 | 1.3.2.6 | Losa superior |  | 5d | 2026-09-14 | 2026-09-21 | 18FS-1d, 19, 20, 21, 22 | 4.5d |  |
| 24 | 1.4 | **ÁREA DE BAÑOS Y BODEGA** |  | 38d | 2026-08-10 | 2026-09-26 |  | 0d |  |
| 25 | 1.4.1 | **CIMENTACIÓN** |  | 18d | 2026-08-10 | 2026-09-01 |  | 0d |  |
| 26 | 1.4.1.1 | Excavacion |  | 2d | 2026-08-10 | 2026-08-11 | 3 | 0d |  |
| 27 | 1.4.1.2 | Acarreo de material |  | 1d | 2026-08-12 | 2026-08-12 | 26 | 0d |  |
| 28 | 1.4.1.3 | Compactación |  | 2d | 2026-08-13 | 2026-08-14 | 27 | 0d |  |
| 29 | 1.4.1.4 | Plantilla |  | 1d | 2026-08-15 | 2026-08-17 | 28 | 0d |  |
| 30 | 1.4.1.5 | Losa de Cimentación |  | 2d | 2026-08-17 | 2026-08-19 | 29 | 0d |  |
| 31 | 1.4.1.6 | Muro de contencíon Block 15 |  | 5d | 2026-08-19 | 2026-08-25 | 30 | 0d |  |
| 32 | 1.4.1.7 | Block Dala de 15 |  | 4d | 2026-08-22 | 2026-08-27 | 31SS+3d | 0d |  |
| 33 | 1.4.1.8 | Relleno compactado |  | 3d | 2026-08-27 | 2026-09-01 | 31, 32 | 0d |  |

| ID | WBS | Task | Duration | Start | Finish | Predecessors | Total slack |
| --- | --- | --- | --- | --- | --- | --- | --- |
| 34 | 1.4.2 | **ALBAÑILERIA** | 15d | 2026-08-27 | 2026-09-15 |  | 0d |
| 35 | 1.4.2.1 | Muro de block de 15 y 12cm | 15d | 2026-08-27 | 2026-09-15 | 32, 33SS | 0d |
| 36 | 1.4.2.2 | Block dala de 15 y 12cm | 10d | 2026-09-03 | 2026-09-15 | 35SS+5d | 8d |
| 37 | 1.4.2.3 | Castillos ahogados K1 y K3 | 10d | 2026-09-02 | 2026-09-14 | 35SS+4d | 9d |
| 38 | 1.4.3 | **AZOTEA Y PRETILES** | 9d | 2026-09-14 | 2026-09-26 |  | 0d |
| 39 | 1.4.3.1 | Losa de Azotea de Vigueta y bovedilla | 5d | 2026-09-14 | 2026-09-22 | 35FS-1d | 0d |
| 40 | 1.4.3.2 | Pretiles | 4d | 2026-09-22 | 2026-09-26 | 39 | 0d |
| 41 | 1.4.3.3 | Block dala en pretiles | 3d | 2026-09-23 | 2026-09-26 | 40SS+1d | 0d |
